# 省级就业失业数据收集与管理平台开发

Schedule from MS Project, 2024-03-12 to 2024-09-04, costs in ¥.

## Calendars

- 标准: Mon-Fri 08:00-12:00, 13:00-17:00; Sat-Sun off.

## Resources

| Resource | Rate |
| --- | --- |
| 项目经理 | 28 |
| 架构设计师 | 80 |
| 需求分析师 | 30 |
| 前端开发工程师1 | 35 |
| 前端开发工程师2 | 40 |
| 后端开发工程师1 | 40 |
| 后端开发工程师2 | 40 |
| 测试工程师1 | 30 |
| 测试工程师2 | 30 |
| 运维工程师 | 30 |
| 固定费用 |  |

## Schedule

| ID | WBS | Task | Type | Duration | Start | Finish | Predecessors | Baseline start | Baseline finish | Baseline duration | Total slack | Constraint | Resources | Work | Cost | Baseline cost |
| --- | --- | --- | --- | --- | --- | --- | --- | --- | --- | --- | --- | --- | --- | --- | --- | --- |
| 1 | 1 | **省级就业失业数据收集与管理平台开发** |  | 127d? | 2024-03-12 | 2024-09-04 |  | 2024-03-12 | 2024-09-04 | 127d? | 0d |  |  | 4249.63h | 161,192.98 | 161,192.98 |
| 2 | 1.1 | **项目规划** |  | 14d | 2024-03-12 | 2024-03-29 |  | 2024-03-12 | 2024-03-29 | 14d | 0d |  |  | 72h | 2,428 | 2,428 |
| 3 | 1.1.1 | 合同签订 | manual | 1d | 2024-03-12 | 2024-03-12 |  | 2024-03-12 | 2024-03-12 | 1d |  |  | 项目经理 | 8h | 224 | 224 |
| 4 | 1.1.2 | 计划编制 | manual | 3d | 2024-03-26 | 2024-03-29 | 20 | 2024-03-26 | 2024-03-29 | 3d |  |  | 项目经理 | 24h | 672 | 672 |
| 5 | 1.1.3 | 计划确认 | manual | 0.5d | 2024-03-29 | 2024-03-29 | 4 | 2024-03-29 | 2024-03-29 | 0.5d |  |  | 测试工程师1; 后端开发工程师1; 架构设计师; 前端开发工程师1; 需求分析师; 运维工程师; 测试工程师2; 后端开发工程师2; 前端开发工程师2; 项目经理 | 40h | 1,532 | 1,532 |
| 6 | 1.2 | **需求分析** |  | 115d? | 2024-03-13 | 2024-08-20 |  | 2024-03-13 | 2024-08-20 | 115d? | 0d |  |  | 113.63h | 3,660.98 | 3,660.98 |
| 7 | 1.2.1 | 需求开发 | manual | 5d | 2024-03-13 | 2024-03-19 | 3 | 2024-03-13 | 2024-03-19 | 5d |  |  | 需求分析师 | 1.63h | 48.98 | 48.98 |
| 8 | 1.2.2 | 需求确认 | manual | 0.5d? | 2024-03-20 | 2024-03-20 | 7 | 2024-03-20 | 2024-03-20 | 0.5d? |  |  | 测试工程师1; 测试工程师2; 后端开发工程师1; 后端开发工程师2; 架构设计师; 前端开发工程师1; 前端开发工程师2; 需求分析师; 项目经理; 运维工程师 | 40h | 1,532 | 1,532 |
| 9 | 1.2.3 | **需求管理** |  | 88d | 2024-04-20 | 2024-08-20 | 8 | 2024-04-20 | 2024-08-20 | 88d |  |  |  | 40h | 1,120 | 1,120 |
| 10 | 1.2.3.1 | 1 | manual | 1d | 2024-04-20 | 2024-04-20 |  | 2024-04-20 | 2024-04-20 | 1d |  | start no earlier than 2024-04-20 | 项目经理 | 8h | 224 | 224 |
| 11 | 1.2.3.2 | 2 | manual | 1d | 2024-05-20 | 2024-05-20 |  | 2024-05-20 | 2024-05-20 | 1d |  | start no earlier than 2024-05-20 | 项目经理 | 8h | 224 | 224 |
| 12 | 1.2.3.3 | 3 | manual | 1d | 2024-06-20 | 2024-06-20 |  | 2024-06-20 | 2024-06-20 | 1d |  | start no earlier than 2024-06-20 | 项目经理 | 8h | 224 | 224 |
| 13 | 1.2.3.4 | 4 | manual | 1d | 2024-07-20 | 2024-07-20 |  | 2024-07-20 | 2024-07-20 | 1d |  | start no earlier than 2024-07-20 | 项目经理 | 8h | 224 | 224 |
| 14 | 1.2.3.5 | 5 | manual | 1d | 2024-08-20 | 2024-08-20 |  | 2024-08-20 | 2024-08-20 | 1d |  | start no earlier than 2024-08-20 | 项目经理 | 8h | 224 | 224 |
| 15 | 1.2.4 | 验收测试计划编制 | manual | 2d | 2024-03-20 | 2024-03-22 | 8 | 2024-03-20 | 2024-03-22 | 2d |  |  | 测试工程师1; 测试工程师2 | 32h | 960 | 960 |
| 16 | 1.3 | **开发环境准备** |  | 1d | 2024-04-22 | 2024-04-22 |  | 2024-04-22 | 2024-04-22 | 1d | 0d |  |  | 40h | 1,880 | 1,880 |
| 17 | 1.3.1 | 硬件环境准备 | manual | 0.5d | 2024-04-22 | 2024-04-22 | 29 | 2024-04-22 | 2024-04-22 | 0.5d |  |  | 后端开发工程师1; 后端开发工程师2; 前端开发工程师1; 前端开发工程师2; 架构设计师 | 20h | 940 | 940 |
| 18 | 1.3.2 | 软件环境准备 | manual | 0.5d | 2024-04-22 | 2024-04-22 | 17 | 2024-04-22 | 2024-04-22 | 0.5d |  |  | 后端开发工程师1; 后端开发工程师2; 架构设计师; 前端开发工程师1; 前端开发工程师2 | 20h | 940 | 940 |
| 19 | 1.4 | **总体设计** |  | 14.5d | 2024-03-20 | 2024-04-09 |  | 2024-03-20 | 2024-04-09 | 14.5d | 0d |  |  | 216h | 10,544 | 10,544 |
| 20 | 1.4.1 | 开发标准确定 | manual | 2d | 2024-03-22 | 2024-03-26 | 21 | 2024-03-22 | 2024-03-26 | 2d |  |  | 架构设计师; 项目经理; 后端开发工程师1; 后端开发工程师2; 前端开发工程师1; 前端开发工程师2 | 96h | 4,208 | 4,208 |
| 21 | 1.4.2 | 策略确定 | manual | 2d | 2024-03-20 | 2024-03-22 | 8 | 2024-03-20 | 2024-03-22 | 2d |  |  | 项目经理; 架构设计师 | 32h | 1,728 | 1,728 |
| 22 | 1.4.3 | 架构设计 | manual | 5d | 2024-04-01 | 2024-04-05 | 5 | 2024-04-01 | 2024-04-05 | 5d |  |  | 架构设计师; 项目经理 | 56h | 3,648 | 3,648 |
| 23 | 1.4.4 | 系统测试计划编制 | manual | 2d | 2024-04-08 | 2024-04-09 | 22 | 2024-04-08 | 2024-04-09 | 2d |  |  | 测试工程师2; 测试工程师1 | 32h | 960 | 960 |
| 24 | 1.5 | **详细设计** |  | 13d | 2024-04-08 | 2024-04-24 |  | 2024-04-08 | 2024-04-24 | 13d | 0d |  |  | 176h | 9,008 | 9,008 |
| 25 | 1.5.1 | 系统分析 | manual | 2d | 2024-04-08 | 2024-04-09 | 22 | 2024-04-08 | 2024-04-09 | 2d |  |  | 架构设计师; 项目经理 | 32h | 1,728 | 1,728 |
| 26 | 1.5.2 | 功能模块分析 | manual | 2d | 2024-04-10 | 2024-04-11 | 25 | 2024-04-10 | 2024-04-11 | 2d |  |  | 架构设计师 | 16h | 1,280 | 1,280 |
| 27 | 1.5.3 | 接口设计 | manual | 2d | 2024-04-12 | 2024-04-15 | 26 | 2024-04-12 | 2024-04-15 | 2d |  |  | 架构设计师 | 16h | 1,280 | 1,280 |
| 28 | 1.5.4 | 数据库设计 | manual | 2d | 2024-04-16 | 2024-04-17 | 27 | 2024-04-16 | 2024-04-17 | 2d |  |  | 架构设计师; 后端开发工程师1; 后端开发工程师2 | 48h | 2,560 | 2,560 |
| 29 | 1.5.5 | 美工设计 | manual | 2d | 2024-04-18 | 2024-04-19 | 28 | 2024-04-18 | 2024-04-19 | 2d |  |  | 前端开发工程师1; 前端开发工程师2 | 32h | 1,200 | 1,200 |
| 30 | 1.5.6 | 集成测试计划编制 | manual | 2d | 2024-04-23 | 2024-04-24 | 18 | 2024-04-23 | 2024-04-24 | 2d |  |  | 测试工程师1; 测试工程师2 | 32h | 960 | 960 |

| ID | WBS | Task | Type | Duration | Start | Finish | Predecessors | Baseline start | Baseline finish | Baseline duration | Total slack | Resources | Work | Cost | Baseline cost |
| --- | --- | --- | --- | --- | --- | --- | --- | --- | --- | --- | --- | --- | --- | --- | --- |
| 31 | 1.6 | **程序开发** |  | 64d | 2024-04-25 | 2024-07-23 |  | 2024-04-25 | 2024-07-23 | 64d | 0d |  | 2072h | 76,960 | 76,960 |
| 32 | 1.6.1 | **账号管理模块** |  | 11d | 2024-04-25 | 2024-05-09 |  | 2024-04-25 | 2024-05-09 | 11d | 0d |  | 368h | 13,664 | 13,664 |
| 33 | 1.6.1.1 | 账号管理模块确认需求 | manual | 1d | 2024-04-25 | 2024-04-25 | 30 | 2024-04-25 | 2024-04-25 | 1d |  | 需求分析师; 后端开发工程师1; 后端开发工程师2; 前端开发工程师1; 前端开发工程师2; 项目经理; 架构设计师; 测试工程师1; 测试工程师2 | 72h | 2,824 | 2,824 |
| 34 | 1.6.1.2 | 账号管理模块文档设计 | manual | 1d | 2024-04-26 | 2024-04-26 | 33 | 2024-04-26 | 2024-04-26 | 1d |  | 后端开发工程师1; 后端开发工程师2; 前端开发工程师1; 前端开发工程师2; 运维工程师 | 40h | 1,480 | 1,480 |
| 35 | 1.6.1.3 | 账号管理模块代码设计 | manual | 5d | 2024-04-29 | 2024-05-03 | 34 | 2024-04-29 | 2024-05-03 | 5d |  | 后端开发工程师1; 后端开发工程师2; 前端开发工程师1; 前端开发工程师2 | 160h | 6,200 | 6,200 |
| 36 | 1.6.1.4 | 账号管理模块代码复核 | manual | 2d | 2024-05-06 | 2024-05-07 | 35 | 2024-05-06 | 2024-05-07 | 2d |  | 后端开发工程师1; 后端开发工程师2; 前端开发工程师1; 前端开发工程师2; 运维工程师 | 48h | 1,720 | 1,720 |
| 37 | 1.6.1.5 | 账号管理模块单元测试 | manual | 2d | 2024-05-08 | 2024-05-09 | 36 | 2024-05-08 | 2024-05-09 | 2d |  | 测试工程师1; 测试工程师2; 运维工程师 | 48h | 1,440 | 1,440 |
| 38 | 1.6.2 | **企业基础信息管理模块** |  | 11d | 2024-05-10 | 2024-05-24 |  | 2024-05-10 | 2024-05-24 | 11d | 0d |  | 368h | 13,664 | 13,664 |
| 39 | 1.6.2.1 | 企业基础信息管理模块确认需求 | manual | 1d | 2024-05-10 | 2024-05-10 | 37 | 2024-05-10 | 2024-05-10 | 1d |  | 后端开发工程师1; 后端开发工程师2; 前端开发工程师1; 前端开发工程师2; 测试工程师1; 测试工程师2; 需求分析师; 架构设计师; 项目经理 | 72h | 2,824 | 2,824 |
| 40 | 1.6.2.2 | 企业基础信息管理模块文档设计 | manual | 1d | 2024-05-13 | 2024-05-13 | 39 | 2024-05-13 | 2024-05-13 | 1d |  | 后端开发工程师1; 后端开发工程师2; 前端开发工程师1; 前端开发工程师2; 运维工程师 | 40h | 1,480 | 1,480 |
| 41 | 1.6.2.3 | 企业基础信息管理模块代码设计 | manual | 5d | 2024-05-14 | 2024-05-20 | 40 | 2024-05-14 | 2024-05-20 | 5d |  | 后端开发工程师1; 后端开发工程师2; 前端开发工程师1; 前端开发工程师2 | 160h | 6,200 | 6,200 |
| 42 | 1.6.2.4 | 企业基础信息管理模块代码复核 | manual | 2d | 2024-05-21 | 2024-05-22 | 41 | 2024-05-21 | 2024-05-22 | 2d |  | 后端开发工程师1; 后端开发工程师2; 前端开发工程师1; 前端开发工程师2; 运维工程师 | 48h | 1,720 | 1,720 |
| 43 | 1.6.2.5 | 企业基础信息管理模块单元测试 | manual | 2d | 2024-05-23 | 2024-05-24 | 42 | 2024-05-23 | 2024-05-24 | 2d |  | 测试工程师1; 测试工程师2; 运维工程师 | 48h | 1,440 | 1,440 |
| 44 | 1.6.3 | **企业数据上报模块** |  | 11d | 2024-05-27 | 2024-06-10 |  | 2024-05-27 | 2024-06-10 | 11d | 0d |  | 368h | 13,664 | 13,664 |
| 45 | 1.6.3.1 | 企业数据上报模块确认需求 | manual | 1d | 2024-05-27 | 2024-05-27 | 43 | 2024-05-27 | 2024-05-27 | 1d |  | 测试工程师1; 测试工程师2; 后端开发工程师1; 后端开发工程师2; 架构设计师; 前端开发工程师1; 前端开发工程师2; 项目经理; 需求分析师 | 72h | 2,824 | 2,824 |
| 46 | 1.6.3.2 | 企业数据上报模块文档设计 | manual | 1d | 2024-05-28 | 2024-05-28 | 45 | 2024-05-28 | 2024-05-28 | 1d |  | 后端开发工程师1; 后端开发工程师2; 前端开发工程师1; 前端开发工程师2; 运维工程师 | 40h | 1,480 | 1,480 |
| 47 | 1.6.3.3 | 企业数据上报模块代码设计 | manual | 5d | 2024-05-29 | 2024-06-04 | 46 | 2024-05-29 | 2024-06-04 | 5d |  | 后端开发工程师1; 后端开发工程师2; 前端开发工程师1; 前端开发工程师2 | 160h | 6,200 | 6,200 |
| 48 | 1.6.3.4 | 企业数据上报模块代码复核 | manual | 2d | 2024-06-05 | 2024-06-06 | 47 | 2024-06-05 | 2024-06-06 | 2d |  | 后端开发工程师1; 后端开发工程师2; 前端开发工程师1; 前端开发工程师2; 运维工程师 | 48h | 1,720 | 1,720 |
| 49 | 1.6.3.5 | 企业数据上报模块单元测试 | manual | 2d | 2024-06-07 | 2024-06-10 | 48 | 2024-06-07 | 2024-06-10 | 2d |  | 运维工程师; 测试工程师1; 测试工程师2 | 48h | 1,440 | 1,440 |
| 50 | 1.6.4 | **省管理部门基础信息管理模块** |  | 11d | 2024-06-11 | 2024-06-25 |  | 2024-06-11 | 2024-06-25 | 11d | 0d |  | 368h | 13,664 | 13,664 |
| 51 | 1.6.4.1 | 省管理部门基础信息管理模块需求确认 | manual | 1d | 2024-06-11 | 2024-06-11 | 49 | 2024-06-11 | 2024-06-11 | 1d |  | 测试工程师1; 测试工程师2; 后端开发工程师1; 后端开发工程师2; 前端开发工程师1; 前端开发工程师2; 架构设计师; 项目经理; 需求分析师 | 72h | 2,824 | 2,824 |
| 52 | 1.6.4.2 | 省管理部门基础信息管理模块文档设计 | manual | 1d | 2024-06-12 | 2024-06-12 | 51 | 2024-06-12 | 2024-06-12 | 1d |  | 后端开发工程师1; 后端开发工程师2; 前端开发工程师1; 前端开发工程师2; 运维工程师 | 40h | 1,480 | 1,480 |
| 53 | 1.6.4.3 | 省管理部门基础信息管理模块代码设计 | manual | 5d | 2024-06-13 | 2024-06-19 | 52 | 2024-06-13 | 2024-06-19 | 5d |  | 前端开发工程师1; 前端开发工程师2; 后端开发工程师1; 后端开发工程师2 | 160h | 6,200 | 6,200 |
| 54 | 1.6.4.4 | 省管理部门基础信息管理模块代码复核 | manual | 2d | 2024-06-20 | 2024-06-21 | 53 | 2024-06-20 | 2024-06-21 | 2d |  | 后端开发工程师1; 后端开发工程师2; 前端开发工程师1; 前端开发工程师2; 运维工程师 | 48h | 1,720 | 1,720 |
| 55 | 1.6.4.5 | 省管理部门基础信息管理模块单元测试 | manual | 2d | 2024-06-24 | 2024-06-25 | 54 | 2024-06-24 | 2024-06-25 | 2d |  | 测试工程师1; 测试工程师2; 运维工程师 | 48h | 1,440 | 1,440 |

| ID | WBS | Task | Type | Duration | Start | Finish | Predecessors | Baseline start | Baseline finish | Baseline duration | Total slack | Resources | Work | Cost | Baseline cost |
| --- | --- | --- | --- | --- | --- | --- | --- | --- | --- | --- | --- | --- | --- | --- | --- |
| 56 | 1.6.5 | **数据汇总和分析模块** |  | 20d | 2024-06-26 | 2024-07-23 |  | 2024-06-26 | 2024-07-23 | 20d | 0d |  | 600h | 22,304 | 22,304 |
| 57 | 1.6.5.1 | 数据汇总和分析模块确认需求 | manual | 1d | 2024-06-26 | 2024-06-26 | 55 | 2024-06-26 | 2024-06-26 | 1d |  | 测试工程师1; 测试工程师2; 后端开发工程师1; 后端开发工程师2; 架构设计师; 前端开发工程师1; 前端开发工程师2; 项目经理; 需求分析师 | 72h | 2,824 | 2,824 |
| 58 | 1.6.5.2 | 数据汇总和分析模块文档设计 | manual | 2d | 2024-06-27 | 2024-06-28 | 57 | 2024-06-27 | 2024-06-28 | 2d |  | 后端开发工程师1; 后端开发工程师2; 前端开发工程师1; 前端开发工程师2; 运维工程师 | 40h | 1,480 | 1,480 |
| 59 | 1.6.5.3 | 数据汇总和分析模块代码设计 | manual | 10d | 2024-07-01 | 2024-07-12 | 58 | 2024-07-01 | 2024-07-12 | 10d |  | 后端开发工程师1; 后端开发工程师2; 前端开发工程师1; 前端开发工程师2 | 320h | 12,400 | 12,400 |
| 60 | 1.6.5.4 | 数据汇总和分析模块代码复核 | manual | 4d | 2024-07-15 | 2024-07-18 | 59 | 2024-07-15 | 2024-07-18 | 4d |  | 后端开发工程师1; 后端开发工程师2; 前端开发工程师1; 前端开发工程师2; 运维工程师 | 96h | 3,440 | 3,440 |
| 61 | 1.6.5.5 | 数据汇总和分析模块单元测试 | manual | 3d | 2024-07-19 | 2024-07-23 | 60 | 2024-07-19 | 2024-07-23 | 3d |  | 测试工程师1; 测试工程师2; 运维工程师 | 72h | 2,160 | 2,160 |
| 62 | 1.7 | **测试** |  | 28d | 2024-07-24 | 2024-08-30 |  | 2024-07-24 | 2024-08-30 | 28d | 0d |  | 1152h | 41,200 | 41,200 |
| 63 | 1.7.1 | 集成测试 | manual | 5d | 2024-07-24 | 2024-07-30 | 61 | 2024-07-24 | 2024-07-30 | 5d |  | 测试工程师1; 测试工程师2; 运维工程师 | 120h | 3,600 | 3,600 |
| 64 | 1.7.2 | 系统测试 | manual | 5d | 2024-07-31 | 2024-08-06 | 63 | 2024-07-31 | 2024-08-06 | 5d |  | 运维工程师; 测试工程师1; 测试工程师2 | 120h | 3,600 | 3,600 |
| 65 | 1.7.3 | 测试总结 | manual | 3d | 2024-08-07 | 2024-08-09 | 64 | 2024-08-07 | 2024-08-09 | 3d |  | 测试工程师1; 测试工程师2; 运维工程师 | 72h | 2,160 | 2,160 |
| 66 | 1.7.4 | 缺陷跟踪 | manual | 10d | 2024-08-12 | 2024-08-23 | 65 | 2024-08-12 | 2024-08-23 | 10d |  | 测试工程师1; 测试工程师2; 运维工程师 | 240h | 7,200 | 7,200 |
| 67 | 1.7.5 | 缺陷修复 | manual | 10d | 2024-08-12 | 2024-08-23 | 66FF | 2024-08-12 | 2024-08-23 | 10d |  | 后端开发工程师1; 后端开发工程师2; 前端开发工程师1; 前端开发工程师2; 架构设计师; 项目经理; 需求分析师 | 560h | 23,440 | 23,440 |
| 68 | 1.7.6 | 手册编写 | manual | 5d | 2024-08-26 | 2024-08-30 | 67 | 2024-08-26 | 2024-08-30 | 5d |  | 运维工程师 | 40h | 1,200 | 1,200 |
| 69 | 1.8 | **交付** |  | 8d | 2024-08-26 | 2024-09-04 |  | 2024-08-26 | 2024-09-04 | 8d | 0d |  | 408h | 15,512 | 15,512 |
| 70 | 1.8.1 | 验收测试 | manual | 5d | 2024-08-26 | 2024-08-30 | 67 | 2024-08-26 | 2024-08-30 | 5d |  | 项目经理; 需求分析师; 后端开发工程师1; 后端开发工程师2; 前端开发工程师1; 前端开发工程师2; 测试工程师1; 测试工程师2; 架构设计师 | 360h | 14,120 | 14,120 |
| 71 | 1.8.2 | 产品提交 | manual | 2d | 2024-09-02 | 2024-09-03 | 70 | 2024-09-02 | 2024-09-03 | 2d |  | 运维工程师; 项目经理 | 32h | 928 | 928 |
| 72 | 1.8.3 | 用户培训 | manual | 1d | 2024-09-04 | 2024-09-04 | 71 | 2024-09-04 | 2024-09-04 | 1d |  | 项目经理; 需求分析师 | 16h | 464 | 464 |
